Schedule from GanttProject, 2015-04-06 to 2015-05-01.

## Calendars

- Project calendar: Mon-Fri working; Sat-Sun off.

## Resources

| Resource |
| --- |
| 王云鹏 |
| 冯鑫 |
| 巩加明 |
| 樊迪 |
| 钟斌 |
| 王文彬 |

## Schedule

| ID | WBS | Task | Duration | Start | Finish | Predecessors | Complete | Resources |
| --- | --- | --- | --- | --- | --- | --- | --- | --- |
| 1 | 1 | **支付模块** | 15d | 2015-04-06 | 2015-04-24 |  | 44% |  |
| 2 | 1.1 | 支付宝接入开发 | 5d | 2015-04-06 | 2015-04-10 |  | 100% | 樊迪 |
| 3 | 1.2 | 微信接入开发 | 5d | 2015-04-06 | 2015-04-10 |  | 100% | 钟斌 |
| 4 | 1.3 | 银联接入开发 | 5d | 2015-04-13 | 2015-04-17 | 3 | 50% | 钟斌 |
| 5 | 1.4 | 统一服务接口开发 | 2d | 2015-04-16 | 2015-04-17 |  | 60% | 樊迪 |
| 6 | 1.5 | 定义前台支付接口 | 2d | 2015-04-21 | 2015-04-22 | 5FS+1d |  | 王文彬 [40%] |
| 7 | 1.6 | 内测支付接口 | 3d | 2015-04-20 | 2015-04-22 | 5 |  | 樊迪 |
| 8 | 1.7 | 全面接手支付模块开发 | 3d | 2015-04-20 | 2015-04-22 |  |  | 王文彬 [60%] |
| 9 | 1.8 | 开发支付打转程序 | 3d | 2015-04-22 | 2015-04-24 |  |  | 樊迪 |
| 10 | 1.9 | 熟悉端点代码 | 5d | 2015-04-20 | 2015-04-24 |  |  | 樊迪; 钟斌; 王文彬 |
| 11 | 2 | **账户系统** | 12d | 2015-04-16 | 2015-05-01 |  | 37% |  |
| 12 | 2.1 | 数据表设计 | 2d | 2015-04-16 | 2015-04-17 |  | 100% | 冯鑫 [50%]; 巩加明 [50%] |
| 13 | 2.2 | **代码开发** | 12d | 2015-04-16 | 2015-05-01 |  | 25% |  |
| 14 | 2.2.1 | 基础功能开发 | 2d | 2015-04-16 | 2015-04-17 |  | 100% | 冯鑫 [50%]; 巩加明 [50%] |
| 15 | 2.2.2 | 开发内测 | 2d | 2015-04-20 | 2015-04-21 | 12, 14 |  | 冯鑫; 巩加明 |
| 16 | 2.2.3 | 内部代码评审 | 1d | 2015-04-22 | 2015-04-22 | 15 |  | 王云鹏 [10%]; 冯鑫; 巩加明 |
| 17 | 2.2.4 | 多实例部署功能验证 | 2d | 2015-04-23 | 2015-04-24 | 16 |  | 冯鑫; 巩加明 [80%] |
| 18 | 2.2.5 | 提供dubbo接口文档 | 2d | 2015-04-23 | 2015-04-24 | 16 |  | 巩加明 [20%] |
| 19 | 2.2.6 | 账户与外部系统联调 | 5d | 2015-04-27 | 2015-05-01 | 17 |  |  |
| 20 | 3 | **账户需求梳理** | 2d | 2015-04-16 | 2015-04-17 |  |  | 王云鹏 [35%] |
| 21 | 3.1 | 与外部系统对接关系 | 2d | 2015-04-16 | 2015-04-17 |  |  |  |
| 22 | 4 | **结算中心需求梳理** | 6d | 2015-04-17 | 2015-04-24 |  | 8% | 王云鹏 [65%] |
| 23 | 4.1 | 结算流程梳理 | 3d | 2015-04-17 | 2015-04-21 |  | 20% |  |
| 24 | 4.2 | 接口、字段整理 | 3d | 2015-04-22 | 2015-04-24 | 23 |  |  |
| 25 | 4.3 | 整理凭证号及字段 | 3d | 2015-04-22 | 2015-04-24 | 23 |  |  |

Notes:
- 4: 1.字段总结 / 2.流程图
- 5: 输出dubbo服务接口文档
- 8: 1.复合现在的dubbo服务接口是否满足需要 / 2.输出完整dubbo服务接口文档 / 3.输出完整支付流程图
- 10: 熟悉表结构，接口，以及如何改造
- 21: 给出账务系统与其他系统的数据流转图
- 23: 2015-04-16 过了一遍结算流程 / 2015-04-17 / FI-1-1 中 商家保证金流程 / FI-1-2 中 技术服务费流程 / FI-1-3 高 运费扣款/奖罚扣减流程 / FI-1-4 高 预算申请及使用流程 / FI-1-5 高 货款结算流程 / FI-1-6 高 余额提现流程 / FI-1-7 高 退货退款流程 / FI-1-8 高 余额使用流程 / FI-1-9 低 保证金退款审批流程 / FI-1-10 低 商家保证金逆向流程
- 24: 输出接口表述文档：接口名称，接口描述，接口字段

| ID | WBS | Task | Duration | Start | Finish | Predecessors | Resources |
| --- | --- | --- | --- | --- | --- | --- | --- |
| 26 | 5 | **结算中心开发** | 6d | 2015-04-22 | 2015-04-29 |  |  |
| 27 | 5.1 | 熟悉端点开发技术框架 | 3d | 2015-04-22 | 2015-04-24 |  |  |
| 28 | 5.2 | 结算中心表设计 | 2d | 2015-04-27 | 2015-04-28 | 27 |  |
| 29 | 5.3 | 开发内部dubbo服务 | 1d | 2015-04-29 | 2015-04-29 | 28 |  |
| 30 | 5.4 | sap接口调用开发 | 1d | 2015-04-28 | 2015-04-28 |  |  |
| 31 | 5.5 | sap接口联调 | 1d | 2015-04-29 | 2015-04-29 | 30 |  |
| 32 | 6 | **Kettle预研** | 3d | 2015-04-20 | 2015-04-22 |  | 王云鹏 |
| 33 | 6.1 | 模拟使用场景 | 3d | 2015-04-20 | 2015-04-22 |  |  |

Notes:
- 32: 1.使用kettle生成对账文件 / 2.使用kettle完成对账功能 / 3.设计外部交易文件入库表 / 4.设计差异表
- 33: 使用场景 / 1.对账文件生成 / 2.两个账户之间对账，生成差异 / 3.差异入库、对账状态回写
